How a schedule from an exported table changed from version to version. A marks actual dates.

## Version 1 (saved 2026-10-21)

Note of the change: Merge pull request #70 from 8GUYS/feat/python-migration

| ID | Task | Start | Finish |
| --- | --- | --- | --- |
| 1 | WellQC Platform Development | 2026-07-20 | 2026-10-23 |
| 2 | Sprint 1: Discovery, Architecture & Core Stack | 2026-07-20 | 2026-07-31 |
| 3 | Petrophysical Domain Modeling & Curve Physical Limits | 2026-07-20 | 2026-07-24 |
| 4 | LAS 2.0 Parser Engine & Line Splitter Validation | 2026-07-22 | 2026-07-29 |
| 5 | Next.js 15 App Shell, Navigation & Design System | 2026-07-20 | 2026-07-28 |
| 6 | Database Schema Design & Prisma Setup | 2026-07-22 | 2026-07-30 |
| 7 | CI/CD Pipeline Setup & Repository Governance | 2026-07-20 | 2026-07-25 |
| 8 | Milestone: Core Architecture & Ingestion Proof-of-Concept | 2026-07-31 | 2026-07-31 |
| 9 | Sprint 2: Foundation, Auth & Multi-Tenant Database | 2026-08-03 | 2026-08-14 |
| 10 | Multi-Tenant PostgreSQL Architecture on Neon | 2026-08-03 | 2026-08-07 |
| 11 | Authentication Engine, Session Tokens & Scrypt Hashing | 2026-08-05 | 2026-08-11 |
| 12 | Mnemonic Dictionary & 14 Standard Curve Classifications | 2026-08-03 | 2026-08-07 |
| 13 | Wireline Curve Anomaly Classification & Root Cause Engine | 2026-08-06 | 2026-08-12 |
| 14 | File Upload UI with Drag-and-Drop & Pre-Validation | 2026-08-07 | 2026-08-13 |
| 15 | Vercel Preview Deployments & DB Migration Automation | 2026-08-03 | 2026-08-14 |
| 16 | Milestone: Authenticated Ingestion & Mnemonic Baseline | 2026-08-14 | 2026-08-14 |
| 17 | Sprint 3: Core Engine, Quality Scoring & Ingestion Workspace | 2026-08-17 | 2026-08-28 |
| 18 | Multi-Factor Quality Scoring Algorithm (Completeness/Integrity/Noise) | 2026-08-17 | 2026-08-21 |
| 19 | Upload Workspace Redesign & Modular Tabbed Layout | 2026-08-18 | 2026-08-24 |
| 20 | Subsurface Basin Analytics & KPI Dashboard Aggregations | 2026-08-19 | 2026-08-25 |
| 21 | Automated PDF Audit Report Generator | 2026-08-21 | 2026-08-27 |
| 22 | Atomic Transaction Ingestion Pipeline & Downsampling | 2026-08-20 | 2026-08-26 |
| 23 | Milestone: Complete Quality Scoring & PDF Audit Capability | 2026-08-28 | 2026-08-28 |
| 24 | Sprint 4: Advanced Visualisation, Imputation & Python Migration | 2026-08-31 | 2026-09-11 |
| 25 | FastAPI Microservice Migration & Native NumPy/Pandas Stack | 2026-08-31 | 2026-09-07 |
| 26 | SVG Multi-Track Wireline Log Viewer with Depth Sync | 2026-09-01 | 2026-09-08 |
| 27 | Custom Mnemonic Aliases & Tenant Rule Management | 2026-09-02 | 2026-09-08 |
| 28 | Imputation Algorithm Benchmark (KNN, Spline, Iterative SVD) | 2026-09-03 | 2026-09-09 |
| 29 | Zero-Mock Clean Seeder & Performance Load Testing | 2026-09-04 | 2026-09-10 |
| 30 | Milestone: Unified Python Backend & Interactive Log Viewer | 2026-09-11 | 2026-09-11 |
| 31 | Sprint 5: Security Hardening, Default-to-Deny RBAC & Admin Tools | 2026-09-14 | 2026-09-25 |
| 32 | Server-Side RBAC Enforcement & Ghost Token Elimination | 2026-09-14 | 2026-09-18 |
| 33 | Self-Registration Role Escalation Block (403 on ADMIN role) | 2026-09-16 | 2026-09-21 |
| 34 | Interactive Admin Management CLI (`manage_admin.py`) | 2026-09-17 | 2026-09-22 |
| 35 | Admin Panel UI with Tabbed User Management & Tokens | 2026-09-18 | 2026-09-24 |
| 36 | Automated Security Test Suite (14 Tests in `test_admin_auth.py`) | 2026-09-21 | 2026-09-25 |
| 37 | Milestone: Default-to-Deny Security & Administrative Center | 2026-09-25 | 2026-09-25 |
| 38 | Sprint 6: Production Hardening & Quality Engine 12-Item Overhaul | 2026-09-28 | 2026-10-09 |
| 39 | Item 1-2: Per-Row Anomaly Approvals & Specific Method Routing | 2026-09-28 | 2026-10-02 |
| 40 | Item 3: AUTO Imputation Gap Ranking via Cross-Validation | 2026-09-29 | 2026-10-05 |
| 41 | Item 4: Impossible Values Action Suite (Remove / Clip / Delete Row) | 2026-09-30 | 2026-10-06 |
| 42 | Item 5: Long Null Cluster Guards & Unfillable Flag Boundaries | 2026-10-01 | 2026-10-06 |
| 43 | Item 6-7: Duplicate Depth Prune & 2-Point Neighbour Despiking | 2026-10-02 | 2026-10-07 |
| 44 | Item 8-9: Real Change Report Telemetry & Audit Certificate ID | 2026-10-05 | 2026-10-08 |
| 45 | Item 10-12: Staged Non-Destructive QA UI & Cleaned Export Suite | 2026-10-05 | 2026-10-09 |
| 46 | Sliding-Window IP Rate Limiter & Security Stabilization | 2026-09-28 | 2026-10-02 |
| 47 | Milestone: Certified Quality Engine Overhaul & Audit Pipeline | 2026-10-09 | 2026-10-09 |
| 48 | Sprint 7: Multi-Well Comparison, NUPRC Compliance & Batch Processing | 2026-10-12 | 2026-10-23 |
| 49 | Multi-Well Depth Alignment & Correlation Engine (SE1) | 2026-10-12 | 2026-10-16 |
| 50 | Cross-Well Canvas UI with Synchronized Depth Scrolling (SE2) | 2026-10-13 | 2026-10-19 |
| 51 | Unsupervised ML Lithology Classification on GR-RHOB-NPHI (SE1) | 2026-10-15 | 2026-10-20 |
| 52 | NUPRC Compliance Report Template & Digital Signatures (SE2, DA4) | 2026-10-14 | 2026-10-20 |
| 53 | Niger Delta Formation Cutoffs (Akata, Agbada, Benin) (DA1, DA2) | 2026-10-12 | 2026-10-16 |
| 54 | Offset Niger Delta Demonstration Well Package Curation (DA3) | 2026-10-13 | 2026-10-19 |
| 55 | Asynchronous Batch Ingestion Background Workers & Live Progress (CE1) | 2026-10-14 | 2026-10-21 |
| 56 | Outbound Webhook Event Dispatcher for Cloud Storage Sync (CE2) | 2026-10-15 | 2026-10-22 |
| 57 | End-to-End System Integration & Acceptance Testing Suite (All) | 2026-10-19 | 2026-10-23 |
| 58 | Milestone: Final Production Platform Release & NUPRC Audit Readiness | 2026-10-23 | 2026-10-23 |

## Version 2 (saved 2026-10-30)

Note of the change: Merge pull request #101 from 8GUYS/dev

Last finish 2026-10-23 → 2026-11-27 (+35d).

Added:

| ID | Task | Start | Finish |
| --- | --- | --- | --- |
| 59 | Subsurface Basin Analytics Engine & Real-Time Visualization API (DA3, SE2) | 2026-10-23 | 2026-10-28 |
| 60 | End-to-End System Test Suite (93 Pytest + 38 Jest Passing) (All) | 2026-10-24 | 2026-10-29 |
| 61 | Milestone: Multi-Well Platform, Dynamic Workstation & Core Feature Complete | 2026-10-29 | 2026-10-29 |
| 62 | Sprint 8: Production Deployment, NUPRC Operator Pilot & Cloud Scale | 2026-11-02 | 2026-11-13 |
| 63 | Multi-Region Cloud Deployment & Kubernetes Orchestration (CE1) | 2026-11-02 | 2026-11-06 |
| 64 | Live NUPRC Operator Pilot Program & Formal Submission Validation (DA4, SE2) | 2026-11-03 | 2026-11-10 |
| 65 | Real-Time Wellsite Telemetry Streaming Ingestion (WITSML / OPC-UA) (SE1, CE2) | 2026-11-04 | 2026-11-11 |
| 66 | Unsupervised ML Lithology Clustering on GR-RHOB-NPHI (SE1, DA2) | 2026-11-04 | 2026-11-09 |
| 67 | Advanced Reservoir Rock Physics Module (Sw, Permeability, Net-to-Gross) (DA1, DA2) | 2026-11-05 | 2026-11-11 |
| 68 | Asynchronous Background Ingestion Task Workers & Cloud Queue (CE1, CE2) | 2026-11-05 | 2026-11-11 |
| 69 | Outbound Webhook Cloud Storage Automated Sync Dispatcher (CE2) | 2026-11-06 | 2026-11-12 |
| 70 | Curated In-App Demonstration Well Package for Operator Pilot (DA3) | 2026-11-06 | 2026-11-11 |
| 71 | Enterprise SSO Integration (SAML 2.0 / Azure AD / Okta) & Audit Logs (CE2, SE2) | 2026-11-09 | 2026-11-13 |
| 72 | Milestone: Production Release & NUPRC Pilot Sign-off (All) | 2026-11-13 | 2026-11-13 |
| 73 | Sprint 9: Enterprise Scale, Real-Time Analytics & Hypercare Operational Handoff | 2026-11-16 | 2026-11-27 |
| 74 | High-Availability Multi-AZ Database Clustering & Disaster Recovery (CE2) | 2026-11-16 | 2026-11-20 |
| 75 | Automated Periodic AI Model Drift Detection & Petrophysical Re-calibration (SE1, DA2) | 2026-11-17 | 2026-11-23 |
| 76 | 24/7 SLI/SLO Telemetry Observability, Prometheus Metrics & Alerting (CE1) | 2026-11-18 | 2026-11-24 |
| 77 | Enterprise User Training Portal, API Knowledge Base & Interactive Video Guides (DA3, DA4, SE2) | 2026-11-19 | 2026-11-26 |
| 78 | Client Acceptance Review & Regulatory Compliance Handoff (DA4, CE2) | 2026-11-23 | 2026-11-27 |
| 79 | Milestone: Enterprise General Availability (GA) & Steady-State SLAs (All) | 2026-11-27 | 2026-11-27 |

Changed:

| ID | Task | Start | Finish | Other |
| --- | --- | --- | --- | --- |
| 1 | WellQC Platform Development |  | 2026-10-23 → 2026-11-27 (+35d) |  |
| 28 | Imputation Algorithm Benchmark (KNN, Spline, Random Forest, Gradient Boosting, Linear) |  |  | was named Imputation Algorithm Benchmark (KNN, Spline, Iterative SVD) |
| 36 | Automated Security Test Suite (19 Tests in `test_admin_auth.py`) |  |  | was named Automated Security Test Suite (14 Tests in `test_admin_auth.py`) |
| 48 | Sprint 7: Multi-Well Comparison, Dynamic Workstation & UX Enhancements |  | 2026-10-23 → 2026-10-29 (+6d) | was named Sprint 7: Multi-Well Comparison, NUPRC Compliance & Batch Processing |
| 49 | Multi-Well Depth Alignment & Stratigraphic Correlation Engine (SE1) |  |  | was named Multi-Well Depth Alignment & Correlation Engine (SE1) |
| 50 | Cross-Well Workstation UI & Interactive SVG Overlaid Track (SE2) |  |  | was named Cross-Well Canvas UI with Synchronized Depth Scrolling (SE2) |
| 51 | Stratigraphic Continuity Grading & Depth Shift Mathematics (SE1, DA2) |  |  | was named Unsupervised ML Lithology Classification on GR-RHOB-NPHI (SE1) |
| 53 | Niger Delta Formation Cutoffs & Hybrid Markers DB Schema (DA1, CE2) |  |  | was named Niger Delta Formation Cutoffs (Akata, Agbada, Benin) (DA1, DA2) |
| 54 | Petrophysical Anomaly Benchmark Validation & Test Log Curation (DA3, DA4) |  |  | was named Offset Niger Delta Demonstration Well Package Curation (DA3) |
| 55 | Multi-File Batch Queue & Progress Ingestion UI (CE1, SE2) |  |  | was named Asynchronous Batch Ingestion Background Workers & Live Progress (CE1) |
| 56 | Enterprise Webhook Management Engine & Admin Integration (CE2) |  |  | was named Outbound Webhook Event Dispatcher for Cloud Storage Sync (CE2) |
| 57 | Dynamic Multi-Curve Wireline Log Viewer & Channel Selector (SE1, SE2) | 2026-10-19 → 2026-10-20 (+1d) | 2026-10-23 → 2026-10-26 (+3d) | was named End-to-End System Integration & Acceptance Testing Suite (All) |
| 58 | Interactive Dashboard Onboarding Tour Guide & Spotlight Walkthrough (SE2) | 2026-10-23 → 2026-10-22 (-1d) | 2026-10-23 → 2026-10-27 (+4d) | was named Milestone: Final Production Platform Release & NUPRC Audit Readiness |
