# WellQC Subsurface Log QA Schedule

How a schedule from MS Project XML changed from version to version. A marks actual dates.

## Version 1 (saved 2026-10-22)

Note of the change: Merge branch 'main' into chore/update-deps

| ID | WBS | Task | Duration | Start | Finish | Predecessors | Complete |
| --- | --- | --- | --- | --- | --- | --- | --- |
| 1 | 1 | **WellQC Platform Development** | 70d | 2026-07-20 | 2026-10-23 |  | 95% |
| 2 | 1.1 | **Sprint 1: Discovery, Architecture & Core Stack** | 10d | 2026-07-20 | 2026-07-31 |  | 100% |
| 3 |  | Petrophysical Domain Modeling & Curve Physical Limits | 5d | 2026-07-20 | 2026-07-24 |  | 100% |
| 4 |  | LAS 2.0 Parser Engine & Line Splitter Validation | 6d | 2026-07-22 | 2026-07-29 | 3 | 100% |
| 5 |  | Next.js 15 App Shell, Navigation & Design System | 7d | 2026-07-20 | 2026-07-28 |  | 100% |
| 6 |  | Database Schema Design & Prisma Setup | 7d | 2026-07-22 | 2026-07-30 | 3 | 100% |
| 7 |  | CI/CD Pipeline Setup & Repository Governance | 5d | 2026-07-20 | 2026-07-25 |  | 100% |
| 8 |  | Milestone: Core Architecture & Ingestion Proof-of-Concept | 0d | 2026-07-31 | 2026-07-31 | 4, 5, 6, 7 | 100% |
| 9 | 1.2 | **Sprint 2: Foundation, Auth & Multi-Tenant Database** | 10d | 2026-08-03 | 2026-08-14 | 8 | 100% |
| 10 |  | Multi-Tenant PostgreSQL Architecture on Neon | 5d | 2026-08-03 | 2026-08-07 | 8 | 100% |
| 11 |  | Authentication Engine, Session Tokens & Scrypt Hashing | 5d | 2026-08-05 | 2026-08-11 | 10 | 100% |
| 12 |  | Mnemonic Dictionary & 14 Standard Curve Classifications | 5d | 2026-08-03 | 2026-08-07 | 8 | 100% |
| 13 |  | Wireline Curve Anomaly Classification & Root Cause Engine | 5d | 2026-08-06 | 2026-08-12 | 12 | 100% |
| 14 |  | File Upload UI with Drag-and-Drop & Pre-Validation | 5d | 2026-08-07 | 2026-08-13 | 11 | 100% |
| 15 |  | Vercel Preview Deployments & DB Migration Automation | 10d | 2026-08-03 | 2026-08-14 | 8 | 100% |
| 16 |  | Milestone: Authenticated Ingestion & Mnemonic Baseline | 0d | 2026-08-14 | 2026-08-14 | 10, 11, 13, 14, 15 | 100% |
| 17 | 1.3 | **Sprint 3: Core Engine, Quality Scoring & Ingestion Workspace** | 10d | 2026-08-17 | 2026-08-28 | 16 | 100% |
| 18 |  | Multi-Factor Quality Scoring Algorithm (Completeness/Integrity/Noise) | 5d | 2026-08-17 | 2026-08-21 | 16 | 100% |
| 19 |  | Upload Workspace Redesign & Modular Tabbed Layout | 5d | 2026-08-18 | 2026-08-24 | 16 | 100% |
| 20 |  | Subsurface Basin Analytics & KPI Dashboard Aggregations | 5d | 2026-08-19 | 2026-08-25 | 18 | 100% |
| 21 |  | Automated PDF Audit Report Generator | 5d | 2026-08-21 | 2026-08-27 | 18 | 100% |
| 22 |  | Atomic Transaction Ingestion Pipeline & Downsampling | 5d | 2026-08-20 | 2026-08-26 | 18 | 100% |
| 23 |  | Milestone: Complete Quality Scoring & PDF Audit Capability | 0d | 2026-08-28 | 2026-08-28 | 18, 19, 20, 21, 22 | 100% |
| 24 | 1.4 | **Sprint 4: Advanced Visualisation, Imputation & Python Migration** | 10d | 2026-08-31 | 2026-09-11 | 23 | 100% |
| 25 |  | FastAPI Microservice Migration & Native NumPy/Pandas Stack | 6d | 2026-08-31 | 2026-09-07 | 23 | 100% |
| 26 |  | SVG Multi-Track Wireline Log Viewer with Depth Sync | 6d | 2026-09-01 | 2026-09-08 | 23 | 100% |
| 27 |  | Custom Mnemonic Aliases & Tenant Rule Management | 5d | 2026-09-02 | 2026-09-08 | 25 | 100% |
| 28 |  | Imputation Algorithm Benchmark (KNN, Spline, Iterative SVD) | 5d | 2026-09-03 | 2026-09-09 | 25 | 100% |
| 29 |  | Zero-Mock Clean Seeder & Performance Load Testing | 5d | 2026-09-04 | 2026-09-10 | 25 | 100% |
| 30 |  | Milestone: Unified Python Backend & Interactive Log Viewer | 0d | 2026-09-11 | 2026-09-11 | 25, 26, 27, 28, 29 | 100% |
| 31 | 1.5 | **Sprint 5: Security Hardening, Default-to-Deny RBAC & Admin Tools** | 10d | 2026-09-14 | 2026-09-25 | 30 | 100% |
| 32 |  | Server-Side RBAC Enforcement & Ghost Token Elimination | 5d | 2026-09-14 | 2026-09-18 | 30 | 100% |
| 33 |  | Self-Registration Role Escalation Block (403 on ADMIN role) | 4d | 2026-09-16 | 2026-09-21 | 32 | 100% |
| 34 |  | Interactive Admin Management CLI (`manage_admin.py`) | 4d | 2026-09-17 | 2026-09-22 | 32 | 100% |
| 35 |  | Admin Panel UI with Tabbed User Management & Tokens | 5d | 2026-09-18 | 2026-09-24 | 33 | 100% |
| 36 |  | Automated Security Test Suite (14 Tests in `test_admin_auth.py`) | 5d | 2026-09-21 | 2026-09-25 | 33 | 100% |
| 37 |  | Milestone: Default-to-Deny Security & Administrative Center | 0d | 2026-09-25 | 2026-09-25 | 32, 33, 34, 35, 36 | 100% |
| 38 | 1.6 | **Sprint 6: Production Hardening & Quality Engine 12-Item Overhaul** | 10d | 2026-09-28 | 2026-10-09 | 37 | 100% |
| 39 |  | Item 1-2: Per-Row Anomaly Approvals & Specific Method Routing | 5d | 2026-09-28 | 2026-10-02 | 37 | 100% |
| 40 |  | Item 3: AUTO Imputation Gap Ranking via Cross-Validation | 5d | 2026-09-29 | 2026-10-05 | 39 | 100% |
| 41 |  | Item 4: Impossible Values Action Suite (Remove / Clip / Delete Row) | 5d | 2026-09-30 | 2026-10-06 | 39 | 100% |
| 42 |  | Item 5: Long Null Cluster Guards & Unfillable Flag Boundaries | 4d | 2026-10-01 | 2026-10-06 | 40 | 100% |
| 43 |  | Item 6-7: Duplicate Depth Prune & 2-Point Neighbour Despiking | 4d | 2026-10-02 | 2026-10-07 | 41 | 100% |
| 44 |  | Item 8-9: Real Change Report Telemetry & Audit Certificate ID | 4d | 2026-10-05 | 2026-10-08 | 42, 43 | 100% |
| 45 |  | Item 10-12: Staged Non-Destructive QA UI & Cleaned Export Suite | 5d | 2026-10-05 | 2026-10-09 | 39 | 100% |
| 46 |  | Sliding-Window IP Rate Limiter & Security Stabilization | 5d | 2026-09-28 | 2026-10-02 | 37 | 100% |
| 47 |  | Milestone: Certified Quality Engine Overhaul & Audit Pipeline | 0d | 2026-10-09 | 2026-10-09 | 39, 40, 41, 42, 43, 44, 45, 46 | 100% |
| 48 | 1.7 | **Sprint 7: Multi-Well Comparison, NUPRC Compliance & Batch Processing** | 10d | 2026-10-12 | 2026-10-23 | 47 | 75% |
| 49 |  | Multi-Well Depth Alignment & Correlation Engine (SE1) | 5d | 2026-10-12 | 2026-10-16 | 47 | 100% |
| 50 |  | Cross-Well Canvas UI with Synchronized Depth Scrolling (SE2) | 5d | 2026-10-13 | 2026-10-19 | 49 | 90% |
| 51 |  | Unsupervised ML Lithology Classification on GR-RHOB-NPHI (SE1) | 4d | 2026-10-15 | 2026-10-20 | 49 | 80% |
| 52 |  | NUPRC Compliance Report Template & Digital Signatures (SE2, DA4) | 5d | 2026-10-14 | 2026-10-20 | 47 | 85% |
| 53 |  | Niger Delta Formation Cutoffs (Akata, Agbada, Benin) (DA1, DA2) | 5d | 2026-10-12 | 2026-10-16 | 47 | 100% |
| 54 |  | Offset Niger Delta Demonstration Well Package Curation (DA3) | 5d | 2026-10-13 | 2026-10-19 | 53 | 90% |
| 55 |  | Asynchronous Batch Ingestion Background Workers & Live Progress (CE1) | 6d | 2026-10-14 | 2026-10-21 | 47 | 75% |
| 56 |  | Outbound Webhook Event Dispatcher for Cloud Storage Sync (CE2) | 6d | 2026-10-15 | 2026-10-22 | 47 | 70% |
| 57 |  | End-to-End System Integration & Acceptance Testing Suite (All) | 5d | 2026-10-19 | 2026-10-23 | 50, 51, 52, 54, 55, 56 | 60% |
| 58 |  | Milestone: Final Production Platform Release & NUPRC Audit Readiness | 0d | 2026-10-23 | 2026-10-23 | 57 |  |

## Version 2 (saved 2026-10-30)

Note of the change: Merge pull request #101 from 8GUYS/dev

Last finish 2026-10-23 → 2026-11-27 (+35d). Complete tasks 42 → 53.

Added:

| ID | Task | Duration | Start | Finish | Predecessors |
| --- | --- | --- | --- | --- | --- |
| 59 | Subsurface Basin Analytics Engine & Real-Time Visualization API (DA3, SE2) | 4d | 2026-10-23 | 2026-10-28 | 54 |
| 60 | End-to-End System Test Suite (93 Pytest + 38 Jest Passing) (All) | 5d | 2026-10-24 | 2026-10-29 | 57, 58, 59 |
| 61 | Milestone: Multi-Well Platform, Dynamic Workstation & Core Feature Complete | 0d | 2026-10-29 | 2026-10-29 | 60 |
| 62 | **Sprint 8: Production Deployment, NUPRC Operator Pilot & Cloud Scale** | 10d | 2026-11-02 | 2026-11-13 | 61 |
| 63 | Multi-Region Cloud Deployment & Kubernetes Orchestration (CE1) | 5d | 2026-11-02 | 2026-11-06 | 61 |
| 64 | Live NUPRC Operator Pilot Program & Formal Submission Validation (DA4, SE2) | 6d | 2026-11-03 | 2026-11-10 | 61 |
| 65 | Real-Time Wellsite Telemetry Streaming Ingestion (WITSML / OPC-UA) (SE1, CE2) | 6d | 2026-11-04 | 2026-11-11 | 63 |
| 66 | Unsupervised ML Lithology Clustering on GR-RHOB-NPHI (SE1, DA2) | 5d | 2026-11-04 | 2026-11-09 | 61 |
| 67 | Advanced Reservoir Rock Physics Module (Sw, Permeability, Net-to-Gross) (DA1, DA2) | 5d | 2026-11-05 | 2026-11-11 | 61 |
| 68 | Asynchronous Background Ingestion Task Workers & Cloud Queue (CE1, CE2) | 5d | 2026-11-05 | 2026-11-11 | 63 |
| 69 | Outbound Webhook Cloud Storage Automated Sync Dispatcher (CE2) | 5d | 2026-11-06 | 2026-11-12 | 63 |
| 70 | Curated In-App Demonstration Well Package for Operator Pilot (DA3) | 4d | 2026-11-06 | 2026-11-11 | 64 |
| 71 | Enterprise SSO Integration (SAML 2.0 / Azure AD / Okta) & Audit Logs (CE2, SE2) | 5d | 2026-11-09 | 2026-11-13 | 63 |
| 72 | Milestone: Production Release & NUPRC Pilot Sign-off (All) | 0d | 2026-11-13 | 2026-11-13 | 63, 64, 65, 66, 67, 68, 69, 70, 71 |
| 73 | **Sprint 9: Enterprise Scale, Real-Time Analytics & Hypercare Operational Handoff** | 10d | 2026-11-16 | 2026-11-27 | 72 |
| 74 | High-Availability Multi-AZ Database Clustering & Disaster Recovery (CE2) | 5d | 2026-11-16 | 2026-11-20 | 72 |
| 75 | Automated Periodic AI Model Drift Detection & Petrophysical Re-calibration (SE1, DA2) | 5d | 2026-11-17 | 2026-11-23 | 72 |
| 76 | 24/7 SLI/SLO Telemetry Observability, Prometheus Metrics & Alerting (CE1) | 5d | 2026-11-18 | 2026-11-24 | 74 |
| 77 | Enterprise User Training Portal, API Knowledge Base & Interactive Video Guides (DA3, DA4, SE2) | 6d | 2026-11-19 | 2026-11-26 | 72 |
| 78 | Client Acceptance Review & Regulatory Compliance Handoff (DA4, CE2) | 5d | 2026-11-23 | 2026-11-27 | 76, 77 |
| 79 | Milestone: Enterprise General Availability (GA) & Steady-State SLAs (All) | 0d | 2026-11-27 | 2026-11-27 | 74, 75, 76, 77, 78 |

Changed:

| ID | Task | Start | Finish | Duration | Complete | Predecessors | Other |
| --- | --- | --- | --- | --- | --- | --- | --- |
| 1 | **WellQC Platform Development** |  | 2026-10-23 → 2026-11-27 (+35d) | 70d → 90d | 95% → 78% |  |  |
| 28 | Imputation Algorithm Benchmark (KNN, Spline, Random Forest, Gradient Boosting, Linear) |  |  |  |  |  | was named Imputation Algorithm Benchmark (KNN, Spline, Iterative SVD) |
| 36 | Automated Security Test Suite (19 Tests in `test_admin_auth.py`) |  |  |  |  |  | was named Automated Security Test Suite (14 Tests in `test_admin_auth.py`) |
| 48 | **Sprint 7: Multi-Well Comparison, Dynamic Workstation & UX Enhancements** |  | 2026-10-23 → 2026-10-29 (+6d) | 10d → 14d | 75% → 100% |  | was named Sprint 7: Multi-Well Comparison, NUPRC Compliance & Batch Processing |
| 49 | Multi-Well Depth Alignment & Stratigraphic Correlation Engine (SE1) |  |  |  |  |  | was named Multi-Well Depth Alignment & Correlation Engine (SE1) |
| 50 | Cross-Well Workstation UI & Interactive SVG Overlaid Track (SE2) |  |  |  | 90% → 100% |  | was named Cross-Well Canvas UI with Synchronized Depth Scrolling (SE2) |
| 51 | Stratigraphic Continuity Grading & Depth Shift Mathematics (SE1, DA2) |  |  |  | 80% → 100% |  | was named Unsupervised ML Lithology Classification on GR-RHOB-NPHI (SE1) |
| 52 | NUPRC Compliance Report Template & Digital Signatures (SE2, DA4) |  |  |  | 85% → 100% |  |  |
| 53 | Niger Delta Formation Cutoffs & Hybrid Markers DB Schema (DA1, CE2) |  |  |  |  |  | was named Niger Delta Formation Cutoffs (Akata, Agbada, Benin) (DA1, DA2) |
| 54 | Petrophysical Anomaly Benchmark Validation & Test Log Curation (DA3, DA4) |  |  |  | 90% → 100% |  | was named Offset Niger Delta Demonstration Well Package Curation (DA3) |
| 55 | Multi-File Batch Queue & Progress Ingestion UI (CE1, SE2) |  |  |  | 75% → 100% |  | was named Asynchronous Batch Ingestion Background Workers & Live Progress (CE1) |
| 56 | Enterprise Webhook Management Engine & Admin Integration (CE2) |  |  |  | 70% → 100% |  | was named Outbound Webhook Event Dispatcher for Cloud Storage Sync (CE2) |
| 57 | Dynamic Multi-Curve Wireline Log Viewer & Channel Selector (SE1, SE2) | 2026-10-19 → 2026-10-20 (+1d) | 2026-10-23 → 2026-10-26 (+3d) |  | 60% → 100% | 50, 51, 52, 54, 55, 56 → 50 | was named End-to-End System Integration & Acceptance Testing Suite (All) |
| 58 | Interactive Dashboard Onboarding Tour Guide & Spotlight Walkthrough (SE2) | 2026-10-23 → 2026-10-22 (-1d) | 2026-10-23 → 2026-10-27 (+4d) | 0d → 4d | 0% → 100% | 57 → 50 | was named Milestone: Final Production Platform Release & NUPRC Audit Readiness |
